# 美食菜谱估算持续时间

Schedule from MS Project, 2020-03-20 to 2020-05-15, costs in ¥.

## Calendars

- 标准: Mon-Fri 08:00-12:00, 13:00-17:00; Sat-Sun off.

## Resources

| Resource |
| --- |
| 项目经理 |
| UI设计师 |
| 技术专家 |
| 产品经理 |
| 测试专家 |
| 需求专家 |
| UI专家 |
| 质量专家 |
| 程序员1 |
| 程序员2 |
| 程序员3 |
| 测试员1 |
| 设计专家 |
| AA |
| BB |

## Schedule

| ID | WBS | Task | Duration | Start | Finish | Predecessors | Total slack | Free slack | Resources | Work | Cost |
| --- | --- | --- | --- | --- | --- | --- | --- | --- | --- | --- | --- |
| 1 | 1 | **启动** | 6d | 2020-03-20 | 2020-03-27 |  | 2d |  |  | 92h | 4,600 |
| 2 | 1.1 | 任命项目经理 | 1d | 2020-03-20 | 2020-03-20 |  | 3d |  |  |  |  |
| 3 | 1.2 | 组建核心团队 | 1d | 2020-03-20 | 2020-03-20 |  | 2d | 0d | 项目经理; UI设计师; 技术专家; 产品经理; 测试专家; 需求专家; 质量专家 | 56h | 2,800 |
| 4 | 1.3 | 指定里程碑计划 | 1d | 2020-03-23 | 2020-03-23 |  | 1d | 0d | 项目经理 | 8h | 400 |
| 5 | 1.4 | 分析干系人 | 1d | 2020-03-24 | 2020-03-24 |  | 0d |  | 项目经理 | 8h | 400 |
| 6 | 1.5 | 制定项目章程 | 1d | 2020-03-25 | 2020-03-25 | 3, 4, 5 | 0d |  | 项目经理 | 8h | 400 |
| 7 | 1.6 | 开启项目启动大会 | 2d | 2020-03-26 | 2020-03-27 | 6 | 0d |  | 项目经理 [50%]; 产品经理 [50%] | 12h | 600 |
| 8 | 2 | **规划** | 24d | 2020-03-30 | 2020-04-30 |  | 0d |  |  | 216h | 10,800 |
| 9 | 2.1 | **规划范围** | 5d | 2020-03-30 | 2020-04-03 |  | 0d |  |  | 48h | 2,400 |
| 10 | 2.1.1 | 制定需求说明书 | 1d | 2020-03-30 | 2020-03-30 | 7 | 0d |  | 需求专家 | 8h | 400 |
| 11 | 2.1.2 | 界面设计 | 1d | 2020-03-31 | 2020-03-31 | 10 | 1d |  | UI专家 | 8h | 400 |
| 12 | 2.1.3 | 详细设计说明书 | 1d | 2020-03-31 | 2020-03-31 | 10 | 1d |  | 项目经理 | 8h | 400 |
| 13 | 2.1.4 | 范围说明书 | 1d | 2020-04-01 | 2020-04-01 | 10 | 0d |  | 项目经理 | 8h | 400 |
| 14 | 2.1.5 | 创建WBS | 1d | 2020-04-02 | 2020-04-02 | 11, 12, 13 | 0d |  | 项目经理 | 8h | 400 |
| 15 | 2.1.6 | 形成范围基准 | 1d | 2020-04-03 | 2020-04-03 | 14 | 0d |  | 项目经理 | 8h | 400 |
| 16 | 2.2 | **规划时间** | 5d | 2020-04-06 | 2020-04-10 |  | 0d |  |  | 40h | 2,000 |
| 17 | 2.2.1 | 排列工作包顺序 | 1d | 2020-04-06 | 2020-04-06 | 15 | 0d |  | 项目经理 | 8h | 400 |
| 18 | 2.2.2 | 估算资源 | 1d | 2020-04-07 | 2020-04-07 | 17 | 0d |  | 项目经理 | 8h | 400 |
| 19 | 2.2.3 | 估算持续时间 | 1d | 2020-04-08 | 2020-04-08 | 18 | 4d | 0d | 项目经理 | 8h | 400 |
| 20 | 2.2.4 | 制定进度计划 | 1d | 2020-04-09 | 2020-04-09 | 19 | 4d | 0d | 项目经理 | 8h | 400 |
| 21 | 2.2.5 | 形成进度基准 | 1d | 2020-04-10 | 2020-04-10 | 20 | 4d | 0d | 项目经理 | 8h | 400 |
| 22 | 2.3 | **规划成本** | 5d | 2020-04-13 | 2020-04-17 |  | 4d | 0d |  | 24h | 1,200 |
| 23 | 2.3.1 | 项目成本估算 | 1d | 2020-04-13 | 2020-04-13 | 21 | 4d | 0d | 项目经理 | 8h | 400 |
| 24 | 2.3.2 | 项目预算 | 1d | 2020-04-15 | 2020-04-15 | 23 | 4d | 0d | 项目经理 | 8h | 400 |
| 25 | 2.3.3 | 形成范围基准 | 1d | 2020-04-17 | 2020-04-17 | 24 | 4d |  | 项目经理 | 8h | 400 |

| ID | WBS | Task | Duration | Start | Finish | Predecessors | Total slack | Free slack | Constraint | Resources | Work | Cost |
| --- | --- | --- | --- | --- | --- | --- | --- | --- | --- | --- | --- | --- |
| 26 | 2.4 | **规划质量** | 2d | 2020-04-06 | 2020-04-07 |  | 12d | 8d |  |  | 16h | 800 |
| 27 | 2.4.1 | 制定测试计划 | 1d | 2020-04-06 | 2020-04-06 | 15 | 12d | 0d |  | 质量专家 | 8h | 400 |
| 28 | 2.4.2 | 制定测试用例 | 1d | 2020-04-07 | 2020-04-07 | 27 | 12d |  |  | 质量专家 | 8h | 400 |
| 29 | 2.5 | **规划人力资源** | 3d | 2020-04-14 | 2020-04-16 |  | 0d |  |  |  | 16h | 800 |
| 30 | 2.5.1 | 制定人力资源计划 | 1d | 2020-04-14 | 2020-04-14 | 18 | 0d |  |  | 项目经理 | 8h | 400 |
| 31 | 2.5.2 | 制定人员配备管理计划 | 1d | 2020-04-16 | 2020-04-16 | 30 | 0d |  |  | 项目经理 | 8h | 400 |
| 32 | 2.6 | **规划沟通** | 1d | 2020-04-30 | 2020-04-30 |  | 0d |  |  |  | 8h | 400 |
| 33 | 2.6.1 | 制定沟通管理计划 | 1d | 2020-04-30 | 2020-04-30 | 31 | 0d |  |  | 项目经理 | 8h | 400 |
| 34 | 2.7 | **规划采购** | 7d | 2020-04-21 | 2020-04-29 |  | 1d |  |  |  | 32h | 1,600 |
| 35 | 2.7.1 | 自制外购文件 | 2d | 2020-04-21 | 2020-04-22 | 18 | 1d | 0d |  | 项目经理 | 16h | 800 |
| 36 | 2.7.2 | 制定采购文件 | 2d | 2020-04-28 | 2020-04-29 | 35 | 1d |  |  | 项目经理 | 16h | 800 |
| 37 | 2.8 | **规划风险** | 6d | 2020-04-20 | 2020-04-27 |  | 3d |  |  |  | 32h | 1,600 |
| 38 | 2.8.1 | 识别风险 | 1d | 2020-04-20 | 2020-04-20 | 16, 22, 26, 29 | 4d | 0d | start no earlier than 2020-03-20 | 项目经理 | 8h | 400 |
| 39 | 2.8.2 | 风险分析 | 1d | 2020-04-23 | 2020-04-23 | 38 | 3d | 0d |  | 项目经理 | 8h | 400 |
| 40 | 2.8.3 | 制定风险登记册 | 1d | 2020-04-24 | 2020-04-24 | 39 | 3d | 0d |  | 项目经理 | 8h | 400 |
| 41 | 2.8.4 | 规划整合 | 1d | 2020-04-27 | 2020-04-27 | 40 | 3d |  |  | 项目经理 | 8h | 400 |
| 42 | 3 | **执行与监控** | 9d | 2020-05-01 | 2020-05-13 |  | 0d |  |  |  | 312h | 14,580 |
| 43 | 3.1 | 组件项目团队 | 1d | 2020-05-01 | 2020-05-01 | 8 | 0d |  |  | 项目经理; 测试员1 | 16h | 720 |
| 44 | 3.2 | **项目执行** | 7d | 2020-05-04 | 2020-05-12 |  | 0d |  |  |  | 104h | 4,460 |
| 45 | 3.2.1 | **用户模块** | 7d | 2020-05-04 | 2020-05-12 |  | 0d |  |  |  | 40h | 1,700 |
| 46 | 3.2.1.1 | 注册登录 | 1d | 2020-05-04 | 2020-05-04 | 43 | 0d |  |  | 程序员1; AA | 8h | 420 |
| 47 | 3.2.1.2 | 首页 | 2d | 2020-05-05 | 2020-05-06 | 46 | 0d |  |  | 程序员1 | 8h | 320 |
| 48 | 3.2.1.3 | 浏览食谱 | 2d | 2020-05-11 | 2020-05-12 | 47 | 0d |  |  | 程序员1 | 8h | 320 |
| 49 | 3.2.1.4 | 搜索食谱 | 1d | 2020-05-07 | 2020-05-07 | 47 | 2d | 0d |  | 程序员1 | 8h | 320 |
| 50 | 3.2.1.5 | 下单 | 1d | 2020-05-08 | 2020-05-08 | 49 | 2d | 0d |  | 程序员1 | 8h | 320 |

| ID | WBS | Task | Duration | Start | Finish | Predecessors | Total slack | Free slack | Resources | Work | Cost |
| --- | --- | --- | --- | --- | --- | --- | --- | --- | --- | --- | --- |
| 51 | 3.2.2 | **商家模块** | 4d | 2020-05-04 | 2020-05-07 |  | 3d |  |  | 32h | 1,380 |
| 52 | 3.2.2.1 | 注册入住 | 1d | 2020-05-04 | 2020-05-04 | 43 | 3d | 0d | 程序员2; AA | 8h | 420 |
| 53 | 3.2.2.2 | 商品管理 | 1d | 2020-05-05 | 2020-05-05 | 52 | 3d | 0d | 程序员2 | 8h | 320 |
| 54 | 3.2.2.3 | 订单管理 | 1d | 2020-05-06 | 2020-05-06 | 53 | 3d | 0d | 程序员2 | 8h | 320 |
| 55 | 3.2.2.4 | 统计 | 1d | 2020-05-07 | 2020-05-07 | 54 | 3d | 1d | 程序员2 | 8h | 320 |
| 56 | 3.2.3 | **管理模块** | 4d | 2020-05-04 | 2020-05-07 |  | 3d |  |  | 32h | 1,380 |
| 57 | 3.2.3.1 | 商家审核 | 1d | 2020-05-04 | 2020-05-04 | 43 | 3d | 0d | 程序员3; AA | 8h | 420 |
| 58 | 3.2.3.2 | 促销活动 | 1d | 2020-05-05 | 2020-05-05 | 57 | 3d | 0d | 程序员3 | 8h | 320 |
| 59 | 3.2.3.3 | 统计分析 | 1d | 2020-05-06 | 2020-05-06 | 58 | 3d | 0d | 程序员3 | 8h | 320 |
| 60 | 3.2.3.4 | 备份 | 1d | 2020-05-07 | 2020-05-07 | 59 | 3d | 1d | 程序员3 | 8h | 320 |
| 61 | 3.3 | **项目监控** | 4d | 2020-05-04 | 2020-05-07 |  | 6d |  |  | 72h | 3,540 |
| 62 | 3.3.1 | 各项指标监控 | 1d | 2020-05-04 | 2020-05-04 | 43 | 6d | 0d | 测试员1; 项目经理; AA | 16h | 820 |
| 63 | 3.3.2 | 监控评审 | 1d | 2020-05-05 | 2020-05-05 | 62 | 6d | 0d | 设计专家; 项目经理 | 16h | 800 |
| 64 | 3.3.3 | 变更评审 | 1d | 2020-05-06 | 2020-05-06 | 63 | 6d | 0d | 设计专家; 项目经理 | 16h | 800 |
| 65 | 3.3.4 | 例会 | 1d | 2020-05-07 | 2020-05-07 | 64 | 6d | 3d | UI专家; 测试员1; 测试专家 | 24h | 1,120 |
| 66 | 3.4 | **管理干系人** | 3d | 2020-05-07 | 2020-05-11 |  | 4d | 6d |  | 24h | 1,200 |
| 67 | 3.4.1 | 发布项目信息 | 1d | 2020-05-07 | 2020-05-07 | 43 | 6d |  | 项目经理 | 8h | 400 |
| 68 | 3.4.2 | 报告监控指标 | 1d | 2020-05-08 | 2020-05-08 | 43 | 5d |  | 项目经理 | 8h | 400 |
| 69 | 3.4.3 | 干系人沟通 | 1d | 2020-05-11 | 2020-05-11 | 43 | 4d |  | 项目经理 | 8h | 400 |
| 70 | 3.5 | **团队建设** | 5d | 2020-05-04 | 2020-05-08 |  | 5d |  |  | 72h | 3,460 |
| 71 | 3.5.1 | 培训 | 2d | 2020-05-04 | 2020-05-05 | 43 | 8d |  | UI专家; 测试员1; 测试专家; AA | 24h | 1,220 |
| 72 | 3.5.2 | 娱乐活动 | 2d | 2020-05-05 | 2020-05-06 | 43 | 7d |  | UI专家; 测试员1; 测试专家 | 24h | 1,120 |
| 73 | 3.5.3 | 沟通 | 2d | 2020-05-06 | 2020-05-08 | 43 | 5d |  | UI专家; 测试员1; 测试专家 | 24h | 1,120 |
| 74 | 3.6 | 采购 | 1d | 2020-05-12 | 2020-05-12 | 43 | 3d |  | 项目经理 | 8h | 400 |
| 75 | 3.7 | 项目验收 | 1d | 2020-05-13 | 2020-05-13 | 44 | 0d |  | UI设计师; UI专家 | 16h | 800 |

| ID | WBS | Task | Duration | Start | Finish | Predecessors | Total slack | Free slack | Resources | Work | Cost |
| --- | --- | --- | --- | --- | --- | --- | --- | --- | --- | --- | --- |
| 76 | 4 | **收尾** | 2d | 2020-05-14 | 2020-05-15 |  | 0d |  |  | 40h | 1,920 |
| 77 | 4.1 | 项目终检 | 1d | 2020-05-14 | 2020-05-14 | 75 | 1d | 0d | UI设计师 | 8h | 400 |
| 78 | 4.2 | 结束采购 | 1d | 2020-05-14 | 2020-05-14 | 75 | 1d | 0d | 项目经理 | 8h | 400 |
| 79 | 4.3 | 项目内部收尾 | 2d | 2020-05-14 | 2020-05-15 | 75 | 0d |  | UI设计师; 测试员1; 测试专家 | 24h | 1,120 |
